# C:\Users\Dell\Desktop\srijan wbs

Schedule from MS Project, 2023-12-18 to 2024-03-25, costs in $, A marks actual dates.

## Calendars

- Standard: Mon-Fri 08:00-12:00, 13:00-17:00; Sat-Sun off.

## Resources

| Resource |
| --- |
| Subrat |
| Srijan |
| Sneha |
| Supriya |
| Nitisha |

## Schedule

| ID | WBS | Task | Type | Duration | Start | Finish | Predecessors | Complete | Remaining | Actual finish | Baseline start | Baseline finish | Baseline duration | Total slack | Free slack | Constraint | Resources | Work | Actual work | Cost | Baseline cost | Actual cost |
| --- | --- | --- | --- | --- | --- | --- | --- | --- | --- | --- | --- | --- | --- | --- | --- | --- | --- | --- | --- | --- | --- | --- |
| 1 | 1 | Project Initiation | milestone | 0d | 2023-12-18 A | 2023-12-18 A |  | 100% |  |  | 2023-12-18 | 2023-12-18 | 0d |  |  | start no earlier than 2023-12-18 |  |  |  |  |  |  |
| 2 | 2 | **Planning** |  | 7d | 2023-12-18 A | 2023-12-26 A |  | 100% |  |  | 2023-12-18 | 2023-12-26 | 7d |  |  |  |  | 56h | 56h | 2,640 | 7,960 | 2,640 |
| 3 | 2.1 | Project Selection |  | 3d | 2023-12-18 A | 2023-12-20 A |  | 100% |  |  | 2023-12-18 | 2023-12-20 | 3d |  |  |  | Sneha; Srijan | 24h | 24h | 1,200 | 1,200 | 1,200 |
| 4 | 2.2 | Literature review |  | 4d | 2023-12-21 A | 2023-12-26 A | 3 | 100% |  |  | 2023-12-21 | 2023-12-26 | 4d |  |  |  | Srijan | 32h | 32h | 1,440 | 1,440 | 1,440 |
| 5 | 3 | **Analysis** |  | 8d | 2023-12-27 A | 2024-01-05 | 2 | 100% |  | 2024-01-03 | 2023-12-27 | 2024-01-05 | 8d |  |  |  |  | 32h | 32h | 1,600 | 10,000 | 1,600 |
| 6 | 3.1 | Requirement Gathering |  | 2d | 2023-12-27 A | 2023-12-28 A | 4 | 100% |  |  | 2023-12-27 | 2023-12-28 | 2d |  |  |  | Subrat; Sneha | 16h | 16h | 800 | 800 | 800 |
| 7 | 3.2 | Feasibility analysis |  | 2d | 2024-01-02 A | 2024-01-03 A |  | 100% |  |  | 2024-01-02 | 2024-01-03 | 2d |  |  |  | Sneha | 16h | 16h | 800 | 800 | 800 |
| 8 | 4 | **Design** |  | 6d | 2024-01-08 A | 2024-01-15 A | 5 | 100% |  |  | 2024-01-08 | 2024-01-15 | 6d |  |  |  |  | 48h | 48h | 2,360 | 4,520 | 2,360 |
| 9 | 4.1 | Database Design |  | 2d | 2024-01-08 A | 2024-01-09 A | 5 | 100% |  |  | 2024-01-08 | 2024-01-09 | 2d |  |  |  | Subrat | 16h | 16h | 800 | 800 | 800 |
| 10 | 4.2 | UI Design |  | 1d | 2024-01-10 A | 2024-01-10 A | 9 | 100% |  |  | 2024-01-10 | 2024-01-10 | 1d |  |  |  | Srijan | 8h | 8h | 360 | 360 | 360 |
| 11 | 4.3 | drawing different diagram |  | 3d | 2024-01-11 A | 2024-01-15 A | 10 | 100% |  |  | 2024-01-11 | 2024-01-15 | 3d |  |  |  | Sneha | 24h | 24h | 1,200 | 1,200 | 1,200 |
| 12 | 5 | **Backend Implementation** |  | 20d | 2024-01-16 A | 2024-02-12 | 8 | 100% |  | 2024-01-30 | 2024-01-16 | 2024-02-12 | 20d |  |  |  |  | 88h | 88h | 4,640 | 18,120 | 4,640 |
| 13 | 5.1 | Database Creation |  | 8d | 2024-01-16 A | 2024-01-25 A | 11 | 100% |  |  | 2024-01-16 | 2024-01-25 | 8d |  |  |  | Nitisha | 64h | 64h | 3,200 | 2,880 | 3,200 |
| 14 | 5.2 | Login/Registration Module |  | 3d | 2024-01-26 A | 2024-01-30 A | 13 | 100% |  |  | 2024-01-26 | 2024-01-30 | 3d |  |  |  | Supriya | 24h | 24h | 1,440 | 1,440 | 1,440 |
| 15 | 6 | **Front End Implementation** |  | 18d | 2024-02-13 A | 2024-03-07 | 8 | 75% | 4.5d |  | 2024-02-13 | 2024-03-07 | 18d |  |  |  |  | 176h | 126h | 9,120 | 21,600 | 6,480 |
| 16 | 6.1 | Login/sign out portal |  | 3d | 2024-02-13 A | 2024-02-15 A | 10 | 100% |  |  | 2024-02-13 | 2024-02-15 | 3d |  |  |  | Sneha | 24h | 24h | 1,200 | 1,200 | 1,200 |
| 17 | 6.2 | Dashboard |  | 6d | 2024-02-13 A | 2024-02-20 A | 10 | 100% |  |  | 2024-02-13 | 2024-02-20 | 6d |  |  |  | Subrat | 48h | 48h | 2,400 | 2,400 | 2,400 |
| 18 | 6.3 | Payment method |  | 4d | 2024-02-21 A | 2024-02-26 | 16, 17 | 56% | 1.75d |  | 2024-02-21 | 2024-02-26 | 4d | 6d | 0d |  | Nitisha; Supriya | 64h | 36h | 3,520 | 1,600 | 1,980 |
| 19 | 6.4 | add to cart protal |  | 2d | 2024-02-27 | 2024-02-28 | 18 |  |  |  | 2024-02-27 | 2024-02-28 | 2d | 6d |  |  | Sneha | 16h |  | 800 | 800 |  |
| 20 | 6.5 | Manage Bookings Page |  | 3d | 2024-02-21 A | 2024-02-23 | 16, 17 | 75% | 0.75d |  | 2024-02-21 | 2024-02-23 | 3d | 9d |  |  | Subrat | 24h | 18h | 1,200 | 1,200 | 900 |
| 21 | 7 | **Testing** |  | 10d | 2024-03-08 | 2024-03-21 | 12, 15 |  |  |  | 2024-03-08 | 2024-03-21 | 10d |  |  |  |  | 136h |  | 6,400 | 13,280 |  |
| 22 | 7.1 | Unit Testing |  | 3d | 2024-03-08 | 2024-03-12 |  |  |  |  | 2024-03-08 | 2024-03-12 | 3d | 0d |  |  | Srijan | 24h |  | 1,080 | 1,080 |  |
| 23 | 7.2 | Integration Testing |  | 2d | 2024-03-13 | 2024-03-14 | 22 |  |  |  | 2024-03-13 | 2024-03-14 | 2d | 0d |  |  | Subrat; Srijan | 32h |  | 1,520 | 800 |  |
| 24 | 7.3 | System Testing |  | 5d | 2024-03-15 | 2024-03-21 | 23 |  |  |  | 2024-03-15 | 2024-03-21 | 5d | 0d |  |  | Srijan; Subrat | 80h |  | 3,800 | 3,800 |  |
| 25 | 8 | Deployment |  | 2d | 2024-03-22 | 2024-03-25 | 21 |  |  |  | 2024-03-22 | 2024-03-25 | 2d | 0d |  |  |  |  |  |  |  |  |
| 26 | 9 | Project End | milestone | 0d | 2024-03-25 | 2024-03-25 | 25 |  |  |  | 2024-03-25 | 2024-03-25 | 0d | 0d |  |  |  |  |  |  |  |  |
